Schedule from a web Gantt chart, 2022-07-12 to 2025-10-14.
Saturdays and Sundays are off

## Schedule

| ID | WBS | Task | Duration | Start | Finish | Predecessors | Complete | Status |
| --- | --- | --- | --- | --- | --- | --- | --- | --- |
| 2 | 1 | **Tasks Dependent on Function Team** | 414d | 2022-07-12 | 2024-02-09 |  | 2% |  |
| 3 | 1.1 | (User&eBao BA) BSD Signoff | 1d | 2024-01-01 | 2024-01-01 |  |  |  |
| 4 | 1.2 | (eBao AA) Table Design of Customization | 30d | 2024-01-01 | 2024-02-09 |  | 3% |  |
| 5 | 1.3 | (eBao BA&AD) Code/Master Table Configuration | 1d | 2022-07-12 | 2022-07-12 |  |  |  |
| 6 | 1.4 | (User&eBao BA) Product Set-up | 1d | 2022-07-12 | 2022-07-12 |  |  |  |
| 7 | 1.5 | (User&eBao BA) Product Mappping | 1d | 2022-07-12 | 2022-07-12 |  |  |  |
| 8 | 1.6 | (eBao Tester) Function Test | 1d | 2022-07-12 | 2022-07-12 |  |  |  |
| 9 | 1.7 | (User) Function UAT | 1d | 2022-07-12 | 2022-07-12 |  |  |  |
| 10 | 2 | **Data Migration** | 292d | 2024-09-02 | 2025-10-14 |  |  |  |
| 11 | 2.1 | **DC Requirement Phase** | 20d | 2024-09-02 | 2024-09-27 |  |  |  |
| 12 | 2.1.1 | DC Approach/Scope/Plan | 5d | 2024-09-02 | 2024-09-06 |  |  |  |
| 13 | 2.1.2 | Baseline Template Introduction | 10d | 2024-09-09 | 2024-09-20 | 12 |  | waiting |
| 14 | 2.1.3 | Policy | 1d | 2024-09-09 | 2024-09-09 |  |  |  |
| 15 | 2.1.4 | DC Solution Doc | 4d | 2024-09-23 | 2024-09-26 | 13 |  | waiting |
| 16 | 2.1.5 | DC Approach and Scope Sign-Off | 1d | 2024-09-27 | 2024-09-27 | 15 |  | waiting |
| 17 | 2.2 | **DC Design Phase** | 40d | 2024-09-30 | 2024-11-22 |  |  | waiting |
| 18 | 2.2.1 | Design - Template & Mapping | 25d | 2024-09-30 | 2024-11-01 | 16, 4 |  | waiting |
| 19 | 2.2.2 | Design - Validation Rule & Reconciliation | 15d | 2024-11-04 | 2024-11-22 | 18 |  | waiting |
| 20 | 2.3 | **(Client IT & eBao DC) Staging Data Delivery and Validation** | 100d | 2024-09-23 | 2025-02-07 |  |  |  |
| 21 | 2.3.1 | First Time Delivery of All Staging Tables | 40d | 2024-09-23 | 2024-11-15 | 13 |  | waiting |
| 22 | 2.3.2 | Pass Rate of Staging Data > 60% | 20d | 2024-11-18 | 2024-12-13 | 21 |  | waiting |
| 23 | 2.3.3 | Pass Rate of Staging Data > 90% | 20d | 2024-12-16 | 2025-01-10 | 22 |  | waiting |
| 24 | 2.3.4 | Pass Rate of Staging Data = 100% | 20d | 2025-01-13 | 2025-02-07 | 23 |  | waiting |
| 25 | 2.4 | **DC Development Phase** | 65d | 2024-11-25 | 2025-02-21 |  |  |  |
| 26 | 2.4.1 | DC Development - Coversion Script | 30d | 2024-11-25 | 2025-01-03 | 19 |  | waiting |
| 27 | 2.4.2 | DC Development - Validation Rules | 10d | 2025-01-06 | 2025-01-17 | 26 |  | waiting |
| 28 | 2.4.3 | DC Development - Reconciliation | 10d | 2025-01-20 | 2025-01-31 | 27 |  | waiting |
| 29 | 2.4.4 | DC Development - Trial Run with Real Data | 35d | 2025-01-06 | 2025-02-21 | 26 |  | waiting |

| ID | WBS | Task | Duration | Start | Finish | Predecessors | Status |
| --- | --- | --- | --- | --- | --- | --- | --- |
| 30 | 2.5 | **DC Test - Internal** | 90d | 2025-01-20 | 2025-05-23 |  |  |
| 31 | 2.5.1 | Target Data Validation | 30d | 2025-01-20 | 2025-02-28 | 27 | waiting |
| 32 | 2.5.2 | Target Data Reconciliation | 30d | 2025-03-03 | 2025-04-11 | 31 | waiting |
| 33 | 2.5.3 | Recalculation Verification | 40d | 2025-01-20 | 2025-03-14 | 27 | waiting |
| 34 | 2.5.4 | Batch Jobs Running on Migrated Data | 20d | 2025-03-17 | 2025-04-11 | 33 | waiting |
| 35 | 2.5.5 | **Functional Test with Migrated Data** | 60d | 2025-03-03 | 2025-05-23 |  |  |
| 36 | 2.5.5.1 | Functional Test with Migrated Data (Pass Rate > 70%) | 30d | 2025-03-03 | 2025-04-11 | 31 | waiting |
| 37 | 2.5.5.2 | Functional Test with Migrated Data (Pass Rate > 85%) | 15d | 2025-04-14 | 2025-05-02 | 36 | waiting |
| 38 | 2.5.5.3 | Functional Test with Migrated Data (Pass Rate > 95%) | 15d | 2025-05-05 | 2025-05-23 | 37 | waiting |
| 39 | 2.6 | **DC Test - External (by Client)** | 90d | 2025-04-14 | 2025-08-15 |  |  |
| 40 | 2.6.1 | (Client BA) Comparison Check on UI | 30d | 2025-04-14 | 2025-05-23 | 36 | waiting |
| 41 | 2.6.2 | (Client BA/IT) Pre DC UAT | 30d | 2025-04-14 | 2025-05-23 | 36 | waiting |
| 42 | 2.6.3 | (Client User) DC UAT | 60d | 2025-05-26 | 2025-08-15 | 38, 41 | waiting |
| 43 | 2.7 | **Go Live** | 14d | 2025-08-14 | 2025-09-02 |  |  |
| 44 | 2.7.1 | Rehearsal for CutOver | 12d | 2025-08-14 | 2025-08-29 | 42FS-2d | suspended |
| 45 | 2.7.2 | CutOver | 2d | 2025-09-01 | 2025-09-02 | 44 | suspended |
| 46 | 2.8 | Post-Go-Live Support | 30d | 2025-09-03 | 2025-10-14 | 45 | suspended |
